# 施工及验收

Schedule from MS Project, 2014-03-01 to 2014-05-12.
xj

## Calendars

- 标准: Mon-Sun 08:00-12:00, 13:00-17:00.

## Resources

| Resource |
| --- |
| 安装施工人员20人 |

## Schedule

| ID | WBS | Task | Type | Duration | Start | Finish | Predecessors | Total slack | Free slack | Constraint |
| --- | --- | --- | --- | --- | --- | --- | --- | --- | --- | --- |
| 1 | 1 | **现场施工** |  | 62d | 2014-03-01 | 2014-05-01 |  | 0d |  |  |
| 2 | 1.1 | **施工进场** |  | 7d | 2014-03-01 | 2014-03-07 |  | 0d |  |  |
| 3 | 1.1.1 | 编制施工方案和施工组织计划 |  | 2d | 2014-03-01 | 2014-03-02 |  | 5d |  |  |
| 4 | 1.1.2 | **项目部准备工作** |  | 4d | 2014-03-01 | 2014-03-04 |  | 0d |  |  |
| 5 | 1.1.2.1 | 现场项目部建设/租赁 |  | 2d | 2014-03-01 | 2014-03-02 |  | 5d |  | start no earlier than 2014-03-01 |
| 6 | 1.1.2.2 | 项目部临水、临电手续 |  | 2d | 2014-03-02 | 2014-03-03 |  | 70.5d |  | start no earlier than 2014-03-02 |
| 7 | 1.1.2.3 | 施工单位驻地协调 |  | 2d | 2014-03-01 | 2014-03-02 |  | 0d |  |  |
| 8 | 1.1.2.4 | 项目部办公设施采购 |  | 2d | 2014-03-03 | 2014-03-04 | 7 | 0d |  |  |
| 9 | 1.1.3 | **施工单位准备工作** |  | 7d | 2014-03-01 | 2014-03-07 |  | 0d |  |  |
| 10 | 1.1.3.1 | 施工人员入住 |  | 1d | 2014-03-03 | 2014-03-03 | 7 | 4d |  |  |
| 11 | 1.1.3.2 | 施工设备、安全防护设备、工具准备 |  | 1d | 2014-03-07 | 2014-03-07 | 12 | 0d |  |  |
| 12 | 1.1.3.3 | 现场库房租赁 |  | 2d | 2014-03-05 | 2014-03-06 | 8 | 0d |  |  |
| 13 | 1.1.3.4 | 现场临水、临电手续办理 |  | 1d | 2014-03-01 | 2014-03-01 |  | 6d |  |  |
| 14 | 1.1.4 | **进场安全工作** |  | 2d | 2014-03-03 | 2014-03-04 |  | 3d |  |  |
| 15 | 1.1.4.1 | 施工人员资质证件查验（保险）(种类) |  | 1d | 2014-03-03 | 2014-03-03 | 7 | 4d |  |  |
| 16 | 1.1.4.2 | 施工人员安全教育 |  | 1d | 2014-03-03 | 2014-03-03 | 7 | 3d | 0d |  |
| 17 | 1.1.4.3 | 施工单位安全责任协议 |  | 1d | 2014-03-04 | 2014-03-04 | 7, 16 | 3d |  |  |
| 18 | 1.1.5 | 施工准备工作完成 | milestone | 0d | 2014-03-07 | 2014-03-07 | 17, 15, 16, 10, 11, 12, 13, 3, 5 | 0d |  |  |
| 19 | 1.2 | **支架施工** |  | 9d | 2014-03-08 | 2014-03-16 |  | 0d |  |  |
| 20 | 1.2.1 | 支架到货清点、登记,资料收集、归档，移交施工队入库 |  | 1d | 2014-03-08 | 2014-03-08 | 18 | 0d |  |  |
| 21 | 1.2.2 | 甲方、监理、施工单位、总包方验收 |  | 0.5d | 2014-03-09 | 2014-03-09 | 20 | 0d |  |  |
| 22 | 1.2.3 | 安全、技术交底 |  | 0.5d | 2014-03-09 | 2014-03-09 | 21 | 0d |  |  |
| 23 | 1.2.4 | 屋顶测量、放线 |  | 0.5d | 2014-03-10 | 2014-03-10 | 22 | 0d |  |  |
| 24 | 1.2.5 | 支架吊装至屋顶、散开 |  | 0.5d | 2014-03-10 | 2014-03-10 | 23 | 0d |  |  |
| 25 | 1.2.6 | 支架安装 |  | 3d | 2014-03-11 | 2014-03-13 | 24 | 0d |  |  |
| 26 | 1.2.7 | 支架接地 |  | 1d | 2014-03-14 | 2014-03-14 | 25 | 0d |  |  |
| 27 | 1.2.8 | 支架接地电阻测试 |  | 1d | 2014-03-15 | 2014-03-15 | 26 | 0d |  |  |
| 28 | 1.2.9 | 支架安装过程验收 |  | 1d | 2014-03-16 | 2014-03-16 | 27 | 0d |  |  |

| ID | WBS | Task | Duration | Start | Finish | Predecessors | Total slack | Free slack |
| --- | --- | --- | --- | --- | --- | --- | --- | --- |
| 29 | 1.3 | **组件安装** | 11d | 2014-03-17 | 2014-03-27 |  | 0d |  |
| 30 | 1.3.1 | 组件到货清点、登记,资料收集、归档，移交施工队入库 | 1d | 2014-03-17 | 2014-03-17 | 28 | 52.5d | 0d |
| 31 | 1.3.2 | 甲方、监理、施工单位、总包方验收 | 1d | 2014-03-18 | 2014-03-18 | 30 | 52.5d | 0d |
| 32 | 1.3.3 | 组件二次运输 | 1d | 2014-03-17 | 2014-03-17 | 28 | 0d |  |
| 33 | 1.3.4 | 安全、技术交底 | 1d | 2014-03-19 | 2014-03-19 | 31 | 52.5d |  |
| 34 | 1.3.5 | 组件吊装至屋顶，散开 | 1d | 2014-03-18 | 2014-03-18 | 32 | 0d |  |
| 35 | 1.3.6 | 组件安装 | 4d | 2014-03-19 | 2014-03-22 | 34 | 0d |  |
| 36 | 1.3.7 | 组件接地 | 2d | 2014-03-23 | 2014-03-24 | 35 | 0d |  |
| 37 | 1.3.8 | 屋顶接地网接入/屋顶系统接地 | 1d | 2014-03-25 | 2014-03-25 | 36 | 0d |  |
| 38 | 1.3.9 | 组件接地电阻测试 | 1d | 2014-03-26 | 2014-03-26 | 37 | 0d |  |
| 39 | 1.3.10 | 组件安装过程验收 | 1d | 2014-03-27 | 2014-03-27 | 38 | 0d |  |
| 40 | 1.4 | **汇流箱安装** | 7d | 2014-03-28 | 2014-04-03 |  | 0d |  |
| 41 | 1.4.1 | 汇流箱到货清点、登记,交施工队入库 | 1d | 2014-03-28 | 2014-03-28 | 39 | 0d |  |
| 42 | 1.4.2 | 甲方、监理、施工单位、总包方验收 | 1d | 2014-03-29 | 2014-03-29 | 41 | 0d |  |
| 43 | 1.4.3 | 资料收集、归档 | 1d | 2014-03-30 | 2014-03-30 | 42 | 0d |  |
| 44 | 1.4.4 | 出库登记,就位 | 1d | 2014-03-31 | 2014-03-31 | 43 | 0d |  |
| 45 | 1.4.5 | 汇流箱安装 | 1d | 2014-04-01 | 2014-04-01 | 44 | 0d |  |
| 46 | 1.4.6 | 汇流箱接地 | 1d | 2014-04-02 | 2014-04-02 | 45 | 0d |  |
| 47 | 1.4.7 | 汇流箱安装过程验收 | 1d | 2014-04-03 | 2014-04-03 | 46 | 0d |  |
| 48 | 1.5 | **电缆桥架安装** | 6d | 2014-04-04 | 2014-04-09 | 47 | 0d |  |
| 49 | 1.5.1 | 电缆桥架到货清点、登记,交施工队入库 | 0.5d | 2014-04-04 | 2014-04-04 | 39, 47 | 0d |  |
| 50 | 1.5.2 | 资料收集、归档 | 0.5d | 2014-04-04 | 2014-04-04 | 49 | 4.5d |  |
| 51 | 1.5.3 | 甲方、监理、施工单位、总包方验收 | 0.5d | 2014-04-04 | 2014-04-04 | 49 | 0d |  |
| 52 | 1.5.4 | 电缆桥架吊装至屋顶 | 0.5d | 2014-04-05 | 2014-04-05 | 51 | 0d |  |
| 53 | 1.5.5 | 电缆桥架安装固定 | 3d | 2014-04-05 | 2014-04-08 | 52 | 0d |  |
| 54 | 1.5.6 | 电缆桥架接地 | 1d | 2014-04-08 | 2014-04-09 | 53 | 0d |  |
| 55 | 1.5.7 | 电缆桥架安装过程验收 | 0.5d | 2014-04-09 | 2014-04-09 | 50, 54 | 0d |  |

| ID | WBS | Task | Duration | Start | Finish | Predecessors | Total slack | Free slack |
| --- | --- | --- | --- | --- | --- | --- | --- | --- |
| 56 | 1.6 | **逆变房施工** | 23d | 2014-03-08 | 2014-03-30 |  | 16d |  |
| 57 | 1.6.1 | 逆变房位置放线 | 1d | 2014-03-08 | 2014-03-08 | 18 | 16d | 0d |
| 58 | 1.6.2 | 逆变房地基开挖 | 3d | 2014-03-09 | 2014-03-11 | 57 | 16d | 0d |
| 59 | 1.6.3 | 模板搭建/墙体建设 | 4d | 2014-03-12 | 2014-03-15 | 58 | 16d | 0d |
| 60 | 1.6.4 | 室内电缆沟支架分层、槽钢安装 | 1d | 2014-03-16 | 2014-03-16 | 59 | 57.5d |  |
| 61 | 1.6.5 | 屋顶水泥现浇 | 1d | 2014-03-16 | 2014-03-16 | 59 | 16d | 0d |
| 62 | 1.6.6 | 水泥屋顶养护 | 10d | 2014-03-17 | 2014-03-26 | 61 | 16d | 0d |
| 63 | 1.6.7 | 模板拆除 | 1d | 2014-03-27 | 2014-03-27 | 62 | 43.5d | 0d |
| 64 | 1.6.8 | 外墙粉刷 | 1d | 2014-03-28 | 2014-03-28 | 63 | 43.5d | 0d |
| 65 | 1.6.9 | 室内装修、配电回路安装 | 1d | 2014-03-29 | 2014-03-29 | 64 | 43.5d | 0d |
| 66 | 1.6.10 | 接地系统 | 1d | 2014-03-30 | 2014-03-30 | 61, 65 | 43.5d |  |
| 67 | 1.6.11 | 逆变房建设过程验收 | 1d | 2014-03-27 | 2014-03-27 | 62 | 16d | 0d |
| 68 | 1.7 | **逆变单元安装(含交直流柜)** | 3d | 2014-03-28 | 2014-03-30 |  | 16d |  |
| 69 | 1.7.1 | 逆变单元到货清点、登记,交施工队入库 | 0.5d | 2014-03-28 | 2014-03-28 | 67 | 16d | 0d |
| 70 | 1.7.2 | 甲方、监理、施工单位、总包方验收 | 0.5d | 2014-03-28 | 2014-03-28 | 69 | 16d | 0d |
| 71 | 1.7.3 | 资料收集、归档 | 1d | 2014-03-28 | 2014-03-28 | 69SS | 17.5d | 1.5d |
| 72 | 1.7.4 | 逆变单元设备安装就位 | 1d | 2014-03-29 | 2014-03-29 | 70 | 16d | 0d |
| 73 | 1.7.5 | 逆变单元设备屏柜固定 | 0.5d | 2014-03-30 | 2014-03-30 | 72 | 16d | 0d |
| 74 | 1.7.6 | 逆变单元安装过程验收 | 0.5d | 2014-03-30 | 2014-03-30 | 73, 71 | 16d | 0d |
| 75 | 1.8 | **箱变基础施工** | 15d | 2014-03-08 | 2014-03-22 |  | 20d |  |
| 76 | 1.8.1 | 箱变基础施工(开挖地基，基础浇筑) | 3d | 2014-03-08 | 2014-03-10 | 18 | 20d | 0d |
| 77 | 1.8.2 | 接地系统制作 | 1d | 2014-03-11 | 2014-03-11 | 76 | 20d | 0d |
| 78 | 1.8.3 | 基础养护 | 10d | 2014-03-12 | 2014-03-21 | 77 | 20d | 0d |
| 79 | 1.8.4 | 箱变基础施工过程验收 | 1d | 2014-03-22 | 2014-03-22 | 78 | 20d | 0d |

| ID | WBS | Task | Type | Duration | Start | Finish | Predecessors | Total slack | Free slack |
| --- | --- | --- | --- | --- | --- | --- | --- | --- | --- |
| 80 | 1.9 | **箱变设备安装** |  | 2d | 2014-03-23 | 2014-03-24 |  | 20d |  |
| 81 | 1.9.1 | 箱变到货清点、登记,交施工队入库 |  | 0.5d | 2014-03-23 | 2014-03-23 | 79 | 20d | 0d |
| 82 | 1.9.2 | 资料收集、归档 |  | 1d | 2014-03-23 | 2014-03-23 | 81SS | 20.5d | 0.5d |
| 83 | 1.9.3 | 甲方、监理、施工单位、总包方验收 |  | 0.5d | 2014-03-23 | 2014-03-23 | 81 | 20d | 0d |
| 84 | 1.9.4 | 箱变设备就位安装 |  | 0.5d | 2014-03-24 | 2014-03-24 | 83 | 20d | 0d |
| 85 | 1.9.5 | 箱变安装过程验收 |  | 0.5d | 2014-03-24 | 2014-03-24 | 84, 82 | 20d | 0d |
| 86 | 1.10 | **电缆沟施工** |  | 7d | 2014-03-08 | 2014-03-14 |  | 31d |  |
| 87 | 1.10.1 | 电缆沟基础开挖 |  | 3d | 2014-03-08 | 2014-03-10 | 18 | 31d | 0d |
| 88 | 1.10.2 | 电缆沟基础砌砖、水泥抹面 |  | 2d | 2014-03-11 | 2014-03-12 | 87 | 31d | 0d |
| 89 | 1.10.3 | 电缆支架安装、接地制作 |  | 1d | 2014-03-13 | 2014-03-13 | 88 | 31d | 0d |
| 90 | 1.10.4 | 电缆沟盖板铺放 |  | 1d | 2014-03-14 | 2014-03-14 | 89 | 31d | 0d |
| 91 | 1.10.5 | 电缆沟施工过程验收 | milestone | 0d | 2014-03-14 | 2014-03-14 | 90 | 31d | 26d |
| 92 | 1.11 | **电缆到货、敷设、接线** |  | 40.5d | 2014-03-08 | 2014-04-17 |  | 0.5d |  |
| 93 | 1.11.1 | 电缆到货清点、登记,交施工队入库 |  | 0.5d | 2014-03-08 | 2014-03-08 | 18 | 32d | 0d |
| 94 | 1.11.2 | 甲方、监理、施工单位、总包方验收 |  | 0.5d | 2014-03-08 | 2014-03-08 | 93 | 32d |  |
| 95 | 1.11.3 | 资料收集、归档 |  | 1d | 2014-03-08 | 2014-03-09 | 93 | 39.5d | 39d |
| 96 | 1.11.4 | **组件汇流箱线缆铺设接线** |  | 7.5d | 2014-04-10 | 2014-04-17 |  | 0d |  |
| 97 | 1.11.4.1 | 组件接线 |  | 2d | 2014-04-10 | 2014-04-11 | 55, 94 | 0d |  |
| 98 | 1.11.4.2 | 组件至汇流箱电缆敷设 |  | 3d | 2014-04-12 | 2014-04-14 | 97 | 0d |  |
| 99 | 1.11.4.3 | 电缆敷设检查、绝缘测试 |  | 0.5d | 2014-04-15 | 2014-04-15 | 98 | 0d |  |
| 100 | 1.11.4.4 | 组件至汇流箱电缆接线 |  | 1d | 2014-04-15 | 2014-04-16 | 99 | 0d |  |
| 101 | 1.11.4.5 | 电缆敷设检查、绝缘测试 |  | 1d | 2014-04-16 | 2014-04-17 | 100 | 0d |  |
| 102 | 1.11.5 | **汇流箱至直流柜电缆铺设** |  | 3d | 2014-04-10 | 2014-04-12 |  | 5d |  |
| 103 | 1.11.5.1 | 汇流箱至直流柜电缆敷设 |  | 2d | 2014-04-10 | 2014-04-11 | 55, 91 | 5d | 0d |
| 104 | 1.11.5.2 | 电缆敷设检查、绝缘测试 |  | 1d | 2014-04-12 | 2014-04-12 | 103 | 5d | 0d |

| ID | WBS | Task | Type | Duration | Start | Finish | Predecessors | Total slack | Free slack |
| --- | --- | --- | --- | --- | --- | --- | --- | --- | --- |
| 105 | 1.11.6 | **逆变单元接线** |  | 2d | 2014-03-31 | 2014-04-01 |  | 16d |  |
| 106 | 1.11.6.1 | 逆变单元屏间接线 |  | 1d | 2014-03-31 | 2014-03-31 | 74 | 16d | 0d |
| 107 | 1.11.6.2 | 电缆敷设检查、绝缘测试 |  | 1d | 2014-04-01 | 2014-04-01 | 106 | 16d | 0d |
| 108 | 1.11.7 | **交流柜至低压接入点** |  | 2d | 2014-03-31 | 2014-04-01 |  | 16d |  |
| 109 | 1.11.7.1 | 交流柜至低压接入点（380V接入）电缆敷设 |  | 1d | 2014-03-31 | 2014-03-31 | 74 | 16d | 0d |
| 110 | 1.11.7.2 | 电缆敷设检查、绝缘测试 |  | 1d | 2014-04-01 | 2014-04-01 | 109 | 16d | 0d |
| 111 | 1.11.8 | **交流柜至箱变** |  | 4d | 2014-03-25 | 2014-03-28 |  | 20d |  |
| 112 | 1.11.8.1 | 交流柜至箱变（10kV接入）电缆敷设 |  | 1d | 2014-03-25 | 2014-03-25 | 85 | 20d | 0d |
| 113 | 1.11.8.2 | 电缆敷设检查、绝缘测试 |  | 1d | 2014-03-26 | 2014-03-26 | 112 | 20d | 0d |
| 114 | 1.11.8.3 | 箱变高压侧接线 |  | 1d | 2014-03-27 | 2014-03-27 | 113 | 20d | 0d |
| 115 | 1.11.8.4 | 电缆敷设检查、绝缘测试 |  | 1d | 2014-03-28 | 2014-03-28 | 114 | 20d | 0d |
| 116 | 1.11.9 | 接线完毕 | milestone | 0d | 2014-04-17 | 2014-04-17 | 95, 101 | 0.5d | 0d |
| 117 | 1.12 | **防雷、接地施工** |  | 1d | 2014-04-17 | 2014-04-18 | 116 | 0.5d |  |
| 118 | 1.12.1 | 系统接地验收 |  | 1d | 2014-04-17 | 2014-04-18 |  | 0.5d |  |
| 119 | 1.13 | **单体设备测试** |  | 21d | 2014-03-29 | 2014-04-18 |  | 0d |  |
| 120 | 1.13.1 | 组件测试 |  | 0.5d | 2014-04-17 | 2014-04-17 | 101 | 0d |  |
| 121 | 1.13.2 | 汇流箱测试 |  | 1d | 2014-04-18 | 2014-04-18 | 120 | 0d |  |
| 122 | 1.13.3 | 直流柜测试 |  | 1d | 2014-04-13 | 2014-04-13 | 104 | 5d |  |
| 123 | 1.13.4 | 逆变柜测试 |  | 1d | 2014-04-02 | 2014-04-02 | 107 | 16d |  |
| 124 | 1.13.5 | 交流柜测试、隔离变试验 |  | 1d | 2014-04-02 | 2014-04-02 | 115, 110 | 16d |  |
| 125 | 1.13.6 | 箱变测试、高压试验 |  | 1d | 2014-03-29 | 2014-03-29 | 115 | 20d |  |
| 126 | 1.13.7 | 单体调试完毕 | milestone | 0d | 2014-04-18 | 2014-04-18 | 120, 121, 122, 123, 124, 125 | 0d |  |
| 127 | 1.14 | **系统联调** |  | 13d | 2014-04-19 | 2014-05-01 |  | 0d |  |
| 128 | 1.14.1 | 调试方案编制和审核 |  | 1d | 2014-04-19 | 2014-04-19 | 126, 118 | 0d |  |
| 129 | 1.14.2 | 一次回路接线检查 |  | 1d | 2014-04-20 | 2014-04-20 | 128 | 0d |  |
| 130 | 1.14.3 | 二次回路接线检查 |  | 1d | 2014-04-21 | 2014-04-21 | 129 | 0d |  |
| 131 | 1.14.4 | 通讯调试 |  | 7d | 2014-04-22 | 2014-04-28 | 130 | 0d |  |
| 132 | 1.14.5 | 后台搭建 |  | 1d | 2014-04-29 | 2014-04-29 | 131 | 0d |  |
| 133 | 1.14.6 | 并网实验 |  | 1d | 2014-04-30 | 2014-04-30 | 132 | 0d |  |
| 134 | 1.14.7 | 调试报告编制 |  | 1d | 2014-05-01 | 2014-05-01 | 133 | 0d |  |
| 135 | 1.14.8 | 系统联调完毕 | milestone | 0d | 2014-05-01 | 2014-05-01 | 134 | 0d |  |

| ID | WBS | Task | Type | Duration | Start | Finish | Predecessors | Total slack |
| --- | --- | --- | --- | --- | --- | --- | --- | --- |
| 136 | 2 | **并网验收** |  | 5d | 2014-05-02 | 2014-05-06 |  | 0d |
| 137 | 2.1 | **电业局并网、接入验收** |  | 5d | 2014-05-02 | 2014-05-06 |  | 0d |
| 138 | 2.1.1 | 准备相关资料 |  | 1d | 2014-05-02 | 2014-05-02 | 135 | 0d |
| 139 | 2.1.2 | 递交并网申请报告及相关资料 |  | 1d | 2014-05-03 | 2014-05-03 | 138 | 0d |
| 140 | 2.1.3 | 电业局进行现场设备验收 |  | 1d | 2014-05-04 | 2014-05-04 | 139 | 0d |
| 141 | 2.1.4 | 电业局进行现场功能验收 |  | 1d | 2014-05-05 | 2014-05-05 | 140 | 0d |
| 142 | 2.1.5 | 电业局出具验收报告 |  | 1d | 2014-05-06 | 2014-05-06 | 141 | 0d |
| 143 | 2.1.6 | 并网验收完毕 | milestone | 0d | 2014-05-06 | 2014-05-06 | 142 | 0d |
| 144 | 3 | **项目竣工验收和移交** |  | 6d | 2014-05-07 | 2014-05-12 |  | 0d |
| 145 | 3.1 | **现场验收** |  | 3d | 2014-05-07 | 2014-05-09 |  | 0d |
| 146 | 3.1.1 | 提交现场验收申请 |  | 1d | 2014-05-07 | 2014-05-07 | 143 | 0d |
| 147 | 3.1.2 | 投资方、监理、运维、施工方现场验收 |  | 1d | 2014-05-08 | 2014-05-08 | 146 | 0d |
| 148 | 3.1.3 | 出具三方签字的现场验收报告 |  | 1d | 2014-05-09 | 2014-05-09 | 147 | 0d |
| 149 | 3.2 | **资料移交** |  | 3d | 2014-05-10 | 2014-05-12 |  | 0d |
| 150 | 3.2.1 | 资料准备 |  | 1d | 2014-05-10 | 2014-05-10 | 148 | 0d |
| 151 | 3.2.2 | 资料装订 |  | 0.5d | 2014-05-11 | 2014-05-11 | 150 | 0d |
| 152 | 3.2.3 | 资料移交 |  | 0.5d | 2014-05-11 | 2014-05-11 | 151 | 0d |
| 153 | 3.2.4 | 备品备件移交 |  | 1d | 2014-05-12 | 2014-05-12 | 152 | 0d |
| 154 | 3.3 | 竣工验收单四方签字 | milestone | 0d | 2014-05-12 | 2014-05-12 | 148, 153 | 0d |
